# boky

Schedule from MS Project, 2017-06-07 to 2017-09-12, 7 hours a day, A marks actual dates.

## Calendars

- Standard: Mon-Fri 09:00-12:00, 14:00-18:00; Sat-Sun off.

## Schedule

| ID | WBS | Task | Duration | Start | Finish | Predecessors | Complete | Remaining | Total slack | Constraint |
| --- | --- | --- | --- | --- | --- | --- | --- | --- | --- | --- |
| 1 | 1 | **Stage chez Nivo SA** | 70d | 2017-06-07 A | 2017-09-12 |  | 84% | 11.08d | 0d |  |
| 2 | 1.1 | **Module de taux de change Odoo depuis la BFM** | 21d | 2017-06-07 A | 2017-07-05 A |  | 100% |  |  |  |
| 3 | 1.1.1 | **Prise en main et réglage de l'environnement de travail** | 2d | 2017-06-07 A | 2017-06-08 A |  | 100% |  |  |  |
| 4 | 1.1.1.1 | Installation et configuration de docker | 1d | 2017-06-07 A | 2017-06-07 A |  | 100% |  |  | start no earlier than 2017-06-07 |
| 5 | 1.1.1.2 | Installation de Postgres et Odoo dans docker | 1d | 2017-06-08 A | 2017-06-08 A | 4 | 100% |  |  |  |
| 6 | 1.1.2 | **Prise de données depuis le site de la BFM (Webscraping)** | 6d | 2017-06-09 A | 2017-06-16 A | 3 | 100% |  |  |  |
| 7 | 1.1.2.1 | Utilisation de Sélénium | 1d | 2017-06-09 A | 2017-06-09 A |  | 100% |  |  |  |
| 8 | 1.1.2.2 | Utilisation de lxml | 2d | 2017-06-12 A | 2017-06-13 A | 7 | 100% |  |  |  |
| 9 | 1.1.2.3 | Utilisation de BeautifulSoup | 2d | 2017-06-14 A | 2017-06-15 A | 8 | 100% |  |  |  |
| 10 | 1.1.2.4 | Test unitaires extra-odoo | 1d | 2017-06-16 A | 2017-06-16 A | 9 | 100% |  |  |  |
| 11 | 1.1.3 | **Integration du module dans Odoo** | 4d | 2017-06-19 A | 2017-06-22 A | 6 | 100% |  |  |  |
| 12 | 1.1.3.1 | Synchronisation Odoo (dans docker) avec dossier windows | 1d | 2017-06-19 A | 2017-06-19 A |  | 100% |  |  |  |
| 13 | 1.1.3.2 | Recherche de module similaire pour Odoo | 1d | 2017-06-19 A | 2017-06-19 A |  | 100% |  |  |  |
| 14 | 1.1.3.3 | Ajout de nouvelle source dans currency_rate_update | 3d | 2017-06-20 A | 2017-06-22 A | 13 | 100% |  |  |  |
| 15 | 1.1.4 | **Simplification de module** | 3d | 2017-06-23 A | 2017-06-27 A | 11 | 100% |  |  |  |
| 16 | 1.1.4.1 | externalisation de BeautifulSoup | 1d | 2017-06-23 A | 2017-06-23 A |  | 100% |  |  |  |
| 17 | 1.1.4.2 | externalisation du module de dépendance | 2d | 2017-06-26 A | 2017-06-27 A | 16 | 100% |  |  |  |
| 18 | 1.1.5 | **Création des lanceurs automatiques (build.sh & test.sh)** | 6d | 2017-06-28 A | 2017-07-05 A |  | 100% |  |  |  |
| 19 | 1.1.5.1 | Création des tests unitaires avec Odoo | 3d | 2017-06-28 A | 2017-06-30 A | 15 | 100% |  |  |  |
| 20 | 1.1.5.2 | Création du build.sh | 1d | 2017-07-03 A | 2017-07-03 A | 19 | 100% |  |  |  |
| 21 | 1.1.5.3 | Création du test.sh | 2d | 2017-07-04 A | 2017-07-05 A | 20 | 100% |  |  |  |
| 22 | 1.2 | **Appication mobile Marchand Ariary.net** | 49d | 2017-07-06 A | 2017-09-12 | 2 | 78% | 10.75d | 0d |  |
| 23 | 1.2.1 | **Documentation et prise en main react-native** | 6d | 2017-07-06 A | 2017-07-13 A |  | 100% |  |  |  |
| 24 | 1.2.1.1 | Installation et configuration de réact-native | 2d | 2017-07-06 A | 2017-07-07 A |  | 100% |  |  |  |
| 25 | 1.2.1.2 | Faire un HelloWorld | 1d | 2017-07-10 A | 2017-07-10 A | 24 | 100% |  |  |  |
| 26 | 1.2.1.3 | Familiarisation avec le système de navigation | 3d | 2017-07-11 A | 2017-07-13 A | 25 | 100% |  |  |  |

| ID | WBS | Task | Duration | Start | Finish | Predecessors | Complete | Remaining | Total slack | Free slack | Constraint |
| --- | --- | --- | --- | --- | --- | --- | --- | --- | --- | --- | --- |
| 27 | 1.2.2 | **Réalisation d'une maquette** | 2d | 2017-07-14 A | 2017-07-17 A | 23 | 100% |  |  |  |  |
| 28 | 1.2.2.1 | Page d'accueil | 2d | 2017-07-14 A | 2017-07-17 A |  | 100% |  |  |  |  |
| 29 | 1.2.2.2 | Login and register | 2d | 2017-07-14 A | 2017-07-17 A |  | 100% |  |  |  |  |
| 30 | 1.2.2.3 | Historique de transaction | 2d | 2017-07-14 A | 2017-07-17 A |  | 100% |  |  |  |  |
| 31 | 1.2.3 | **Page d'accueil** | 13d | 2017-07-18 A | 2017-08-03 | 27 | 54% | 6d | 2d | 0d |  |
| 32 | 1.2.3.1 | Generate qrCode basique | 1d | 2017-07-18 A | 2017-07-18 A |  | 100% |  |  |  |  |
| 33 | 1.2.3.2 | Synchronisation en temps réel du QR Code avec un formulaire | 3d | 2017-07-20 A | 2017-07-24 A |  | 100% |  |  |  | start no earlier than 2017-07-20 |
| 34 | 1.2.3.3 | Clavier numérique personnalisé | 5d | 2017-07-25 | 2017-07-31 | 33 |  |  | 5d |  |  |
| 35 | 1.2.3.4 | QR code avec image | 1d | 2017-08-01 A | 2017-08-01 A | 34 | 100% |  |  |  |  |
| 36 | 1.2.3.5 | remise en forme design | 1d | 2017-08-02 A | 2017-08-02 A | 35 | 100% |  |  |  |  |
| 37 | 1.2.3.6 | lien de téléchargement de l'app ClientAriary dans les Store | 1d | 2017-08-02 A | 2017-08-02 | 35 | 50% | 0.5d | 0.5d | 0d |  |
| 38 | 1.2.3.7 | Slide de bienvenue | 1d | 2017-08-03 A | 2017-08-03 | 37 | 50% | 0.5d | 2d |  |  |
| 39 | 1.2.4 | Reunion avec Ariary.net | 1d | 2017-07-19 A | 2017-07-19 A |  | 100% |  |  |  |  |
| 40 | 1.2.5 | **Login** | 5d | 2017-08-04 A | 2017-08-10 | 31 | 60% | 2d | 23d |  |  |
| 41 | 1.2.5.1 | Création login dans l'application | 2d | 2017-08-04 | 2017-08-07 |  |  |  | 26d |  |  |
| 42 | 1.2.5.2 | Login dans un webview | 3d | 2017-08-08 A | 2017-08-10 A | 41 | 100% |  |  |  |  |
| 43 | 1.2.6 | **Register** | 2d | 2017-08-11 A | 2017-08-14 A | 40 | 100% |  |  |  |  |
| 44 | 1.2.6.1 | Step 1 | 1d | 2017-08-11 A | 2017-08-11 A |  | 100% |  |  |  |  |
| 45 | 1.2.6.2 | Step 2 | 1d | 2017-08-14 A | 2017-08-14 A | 44 | 100% |  |  |  |  |
| 46 | 1.2.7 | **Historique de transaction** | 5d | 2017-08-15 A | 2017-08-21 A | 43 | 100% |  |  |  |  |
| 47 | 1.2.7.1 | Création de l'interface | 1d | 2017-08-15 A | 2017-08-15 A |  | 100% |  |  |  |  |
| 48 | 1.2.7.2 | Dynamisation | 2d | 2017-08-16 A | 2017-08-17 A | 47 | 100% |  |  |  |  |
| 49 | 1.2.7.3 | remise en forme design | 2d | 2017-08-18 A | 2017-08-21 A | 48 | 100% |  |  |  |  |
| 50 | 1.2.8 | **Solde de compte** | 3d | 2017-08-22 A | 2017-08-24 | 46 | 94% | 0.19d | 0d |  |  |
| 51 | 1.2.8.1 | Création de l'interface | 1d | 2017-08-22 A | 2017-08-22 A |  | 100% |  |  |  |  |
| 52 | 1.2.8.2 | Dynamisation | 1d | 2017-08-23 A | 2017-08-23 A | 51 | 100% |  |  |  |  |
| 53 | 1.2.8.3 | Ajout fonction refresh | 1d | 2017-08-23 A | 2017-08-23 | 51 | 75% | 0.25d | 1d |  |  |
| 54 | 1.2.8.4 | remise en forme design | 1d | 2017-08-24 A | 2017-08-24 A | 53 | 100% |  |  |  |  |

| ID | WBS | Task | Duration | Start | Finish | Predecessors | Complete | Remaining | Total slack | Free slack |
| --- | --- | --- | --- | --- | --- | --- | --- | --- | --- | --- |
| 55 | 1.2.9 | **Paramètre et configuration** | 2d | 2017-08-25 A | 2017-08-28 | 50 | 63% | 0.75d | 0d |  |
| 56 | 1.2.9.1 | Création de l'interface Paramètre | 1d | 2017-08-25 A | 2017-08-25 A | 50 | 100% |  |  |  |
| 57 | 1.2.9.2 | Mise en place d'un assistant de configuration | 1d | 2017-08-28 A | 2017-08-28 | 56 | 25% | 0.75d | 0d |  |
| 58 | 1.2.10 | **Système de notification** | 5d | 2017-08-29 A | 2017-09-04 | 55 | 88% | 0.62d | 1.5d | 0d |
| 59 | 1.2.10.1 | Création du back Office | 2d | 2017-08-29 A | 2017-08-30 |  | 75% | 0.5d | 4.5d |  |
| 60 | 1.2.10.2 | Réception de notification background | 2d | 2017-08-31 A | 2017-09-01 A | 59 | 100% |  |  |  |
| 61 | 1.2.10.3 | Badge de notification | 1d | 2017-09-04 A | 2017-09-04 A | 60 | 100% |  |  |  |
| 62 | 1.2.10.4 | Notification in Foreground | 1d | 2017-09-04 A | 2017-09-04 | 60 | 75% | 0.25d | 1.5d |  |
| 63 | 1.2.11 | Recherche sur historique | 2d | 2017-09-05 A | 2017-09-06 | 58 | 75% | 0.5d | 0.75d | 0d |
| 64 | 1.2.12 | Sharing QR Code via other app | 1d | 2017-09-07 A | 2017-09-07 | 63 | 75% | 0.25d | 3d |  |
| 65 | 1.2.13 | Débogage | 4d | 2017-09-07 A | 2017-09-12 | 63 | 50% | 2d | 0d |  |
